# 车载测试公有云版研发及上线

Schedule from a web Gantt chart, 2025-04-14 to 2025-10-31.
Sundays are off

## Schedule

| ID | WBS | Task | Duration | Start | Finish | Complete | inPeople | Status |
| --- | --- | --- | --- | --- | --- | --- | --- | --- |
| 2 | 1 | **车载测试公有云V0.1版开发及测试（启动版）** | 3d | 2025-04-28 | 2025-04-30 | 75% | 乃谦 | done |
| 3 | 1.1 | 产品引导页面开发 | 2d | 2025-04-28 | 2025-04-29 | 100% | 乃谦 | done |
| 4 | 1.2 | 用户许可动态配置工具开发 | 2d | 2025-04-29 | 2025-04-30 | 100% | 王拯 | done |
| 5 | 1.3 | 车载公有云V0.1版集成与测试 | 1d | 2025-04-30 | 2025-04-30 | 100% | 路通 | done |
| 6 | 1.4 | 车载公有云V0.1版演示和输出 | 1d | 2025-04-30 | 2025-04-30 | 100% | 路通 | failed |
| 7 | 2 | **车载测试公有云V0.2版开发及测试（基本功能版）** | 29d | 2025-04-28 | 2025-05-30 |  |  | waiting |
| 8 | 2.1 | **BCM相关示例项目设计与验证** | 14d | 2025-04-28 | 2025-05-13 |  | 梦凡、路通 | waiting |
| 9 | 2.1.1 | BCM相关资料知识学习 | 1d | 2025-04-28 | 2025-04-28 |  | 梦凡、路通 | waiting |
| 10 | 2.1.2 | 车窗控制相关协议和用例编写 | 2d | 2025-04-29 | 2025-04-30 |  | 梦凡、路通 | waiting |
| 11 | 2.1.3 | 门锁控制相关协议和用例编写 | 1d | 2025-05-06 | 2025-05-06 |  | 梦凡、路通 | waiting |
| 12 | 2.1.4 | 内灯控制相关协议和用例编写 | 1d | 2025-05-07 | 2025-05-07 |  | 梦凡、路通 | waiting |
| 13 | 2.1.5 | 外灯控制相关协议和用例编写 | 1d | 2025-05-08 | 2025-05-08 |  | 梦凡、路通 | waiting |
| 14 | 2.1.6 | 雨刮控制相关协议和用例编写 | 1d | 2025-05-09 | 2025-05-09 |  | 梦凡、路通 | waiting |
| 15 | 2.1.7 | BCM测试相关许可配置文件编写（基于已有测试机器人） | 1d | 2025-05-10 | 2025-05-10 |  | 梦凡、路通 | waiting |
| 16 | 2.1.8 | BCM示例项目测试验证 | 2d | 2025-05-12 | 2025-05-13 |  | 梦凡、路通 | waiting |
| 17 | 2.2 | **Vector VN7640配套功能开发和验证** | 10d | 2025-05-08 | 2025-05-19 |  |  | waiting |
| 18 | 2.2.1 | VN7640环境搭建及配合CANoe和CANape的使用 | 2d | 2025-05-08 | 2025-05-09 |  | 王工,梦凡,路通 | waiting |
| 19 | 2.2.2 | Vector CAN/CANFD测试机器人的开发与调试 | 2d | 2025-05-10 | 2025-05-12 |  | 新员工，陆毅 | waiting |
| 20 | 2.2.3 | Vector LIN测试机器人的开发与调试 | 2d | 2025-05-13 | 2025-05-14 |  | 新员工，陆毅 | waiting |
| 21 | 2.2.4 | Vector FlexRay测试机器人的开发与调试 | 2d | 2025-05-15 | 2025-05-16 |  | 新员工，陆毅 | waiting |
| 22 | 2.2.5 | Vector 以太网测试机器人的开发与调试 | 2d | 2025-05-17 | 2025-05-19 |  | 新员工，陆毅 | waiting |
| 23 | 2.3 | **基于Vector VN7640验证BCM项目** | 8d | 2025-05-20 | 2025-05-28 |  |  | waiting |
| 24 | 2.3.1 | 许可文件的编写与打包调试 | 3d | 2025-05-20 | 2025-05-22 |  |  | waiting |
| 25 | 2.3.2 | 测试与修复产品功能问题 | 5d | 2025-05-23 | 2025-05-28 |  |  | waiting |

Notes:
- 5: 集成与测试

| ID | WBS | Task | Duration | Start | Finish | Status | inPeople |
| --- | --- | --- | --- | --- | --- | --- | --- |
| 26 | 2.4 | **树莓派测试机器人开发** | 8d | 2025-05-06 | 2025-05-14 | waiting |  |
| 27 | 2.4.1 | GPIO测试机器人开发 | 1d | 2025-05-06 | 2025-05-06 | waiting | 计洋熠 |
| 28 | 2.4.2 | LIN机器人开发 | 2d | 2025-05-07 | 2025-05-08 | waiting | 计洋熠 |
| 29 | 2.4.3 | 树莓派车载电压适配 | 5d | 2025-05-09 | 2025-05-14 | waiting | 计洋熠 |
| 30 | 2.4.4 | 树莓派Antbot测试及问题修复 | 4d | 2025-05-09 | 2025-05-13 | waiting | 路通，计洋熠 |
| 31 | 2.5 | 基于树莓派验证BCM项目 | 5d | 2025-05-15 | 2025-05-20 | waiting | 路通，计洋熠 |
| 32 | 2.6 | 前端页面局部调整 | 9d | 2025-05-06 | 2025-05-15 | waiting |  |
| 33 | 2.7 | 车载公有云V0.2版集成与测试 | 1d | 2025-05-06 | 2025-05-06 | waiting |  |
| 34 | 2.8 | 车载测试公有云V0.2版本演示与输出 | 1d | 2025-05-29 | 2025-05-29 | waiting | 路通 |
| 35 | 2.9 | **UTP前端切换成Vue** | 21d | 2025-05-07 | 2025-05-30 | waiting |  |
| 36 | 2.9.1 | 脚本/用例编辑页面的实现 | 7d | 2025-05-07 | 2025-05-14 | waiting |  |
| 37 | 2.9.2 | 协议管理页面的实现 | 3d | 2025-05-14 | 2025-05-16 | waiting |  |
| 38 | 2.9.3 | 监控(采集/激励）页面的实现 | 4d | 2025-05-19 | 2025-05-22 | waiting |  |
| 39 | 2.9.4 | 测试集页面的实现 | 3d | 2025-05-22 | 2025-05-24 | waiting |  |
| 40 | 2.9.5 | 测试与问题修复 | 5d | 2025-05-26 | 2025-05-30 | waiting |  |
| 41 | 2.10 | **前后端执行过程优化** | 1d | 2025-05-26 | 2025-05-26 | waiting |  |
| 42 | 2.10.1 | 支持同一个引擎多次执行（一个前端页面对应一个引擎） | 1d | 2025-05-26 | 2025-05-26 | waiting |  |
| 43 | 2.10.2 | 支持直接传递命令进行执行 | 1d | 2025-05-26 | 2025-05-26 | waiting |  |
| 44 | 2.10.3 | 命令保存成json格式 | 1d | 2025-05-26 | 2025-05-26 | waiting |  |
| 45 | 2.11 | **车载测试页面布局及调研** | 11d | 2025-05-19 | 2025-05-30 | waiting |  |
| 46 | 2.11.1 | 主页面布局（总线仿真、HIL测试、标定、...） | 4d | 2025-05-19 | 2025-05-22 | waiting |  |
| 47 | 2.11.2 | 标定图形组件的调研和初步实现 | 5d | 2025-05-26 | 2025-05-30 | waiting |  |
| 48 | 3 | **车载测试公有云V0.3版开发及测试（全功能版）** | 48d | 2025-05-06 | 2025-06-30 | failed |  |
| 49 | 3.1 | **标定功能开发与测试** | 1d | 2025-05-06 | 2025-05-06 | failed |  |
| 50 | 3.1.1 | **跑通标定基本功能（核心协议功能）** | 1d | 2025-05-06 | 2025-05-06 | failed |  |
| 51 | 3.1.1.1 | 实现A2L文件解析器并调整convertorMgr | 1d | 2025-05-06 | 2025-05-06 | failed |  |
| 52 | 3.1.1.2 | 编写XCP协议和公共逻辑库 | 1d | 2025-05-06 | 2025-05-06 | failed |  |
| 53 | 3.1.1.3 | 基于A2L和XCP调通基本功能 | 1d | 2025-05-06 | 2025-05-06 | failed |  |

Notes:
- 33: 集成测试

| ID | WBS | Task | Duration | Start | Finish | Status |
| --- | --- | --- | --- | --- | --- | --- |
| 54 | 3.1.2 | **测量和标定相关UI设计** | 1d | 2025-05-06 | 2025-05-06 | failed |
| 55 | 3.1.2.1 | 参考CANape实现Graphic窗口 | 1d | 2025-05-06 | 2025-05-06 | failed |
| 56 | 3.1.2.2 | 参考CANape实现Data窗口 | 1d | 2025-05-06 | 2025-05-06 | failed |
| 57 | 3.1.2.3 | 参考CANape实现Map窗口 | 1d | 2025-05-06 | 2025-05-06 | failed |
| 58 | 3.1.2.4 | 参考CAnape实现Text窗口 | 1d | 2025-05-06 | 2025-05-06 | failed |
| 59 | 3.1.2.5 | **执行过程改进** | 1d | 2025-05-06 | 2025-05-06 | failed |
| 60 | 3.1.2.5.1 | 支持持久引擎（同前端生命周期一致） | 1d | 2025-05-06 | 2025-05-06 | failed |
| 61 | 3.1.2.5.2 | 支持同一个引擎多并发执行 | 1d | 2025-05-06 | 2025-05-06 | failed |
| 62 | 3.1.2.5.3 | 支持直接执行命令 | 1d | 2025-05-06 | 2025-05-06 | failed |
| 63 | 3.1.2.5.4 | 支持将通用协议解析作为引擎扩展模块（不依赖具体硬件） | 1d | 2025-05-06 | 2025-05-06 | failed |
| 64 | 3.1.2.5.5 | **标定主页面实现** | 1d | 2025-05-06 | 2025-05-06 | failed |
| 65 | 3.1.2.5.5.1 | 支持 | 1d | 2025-05-06 | 2025-05-06 | failed |
| 66 | 3.1.2.5.5.2 | 支持将 | 1d | 2025-05-06 | 2025-05-06 | failed |
| 67 | 3.2 | 校准功能开发与测试 | 18d | 2025-05-21 | 2025-06-10 | failed |
| 68 | 3.3 | 更多ECU测试项目 | 19d | 2025-05-21 | 2025-06-11 | failed |
| 69 | 3.4 | 支持Simulink模型动态库 | 7d | 2025-05-13 | 2025-05-20 | failed |
| 70 | 3.5 | 支持Blocky生成Julia语言 | 7d | 2025-05-13 | 2025-05-20 | failed |
| 71 | 3.6 | 编写常用ECU仿真算法 | 31d | 2025-05-20 | 2025-06-24 | failed |
| 72 | 3.7 | 产品集成与测试 | 10d | 2025-06-17 | 2025-06-27 | failed |
| 73 | 3.8 | 车载公有云V0.3版演示和输出 | 1d | 2025-06-30 | 2025-06-30 | failed |
| 74 | 4 | **车载测试公有云V0.4版开发及测试（Linux实时版）** | 94d | 2025-04-14 | 2025-07-31 |  |
| 75 | 4.1 | 基于Linux(RT)的实时版研发 | 41d | 2025-04-14 | 2025-05-30 |  |
| 76 | 4.2 | LinuxRT实时版的集成与测试 | 23d | 2025-06-02 | 2025-06-27 |  |
| 77 | 4.3 | LinuxRT实时版的演示和输出 | 27d | 2025-07-01 | 2025-07-31 |  |

Notes:
- 72: 集成测试

| ID | WBS | Task | Duration | Start | Finish |
| --- | --- | --- | --- | --- | --- |
| 78 | 5 | **车载测试公有云V0.5版开发及测试（VxWorks实时版）** | 52d | 2025-06-02 | 2025-07-31 |
| 79 | 5.1 | 基于VxWorks的实时版研发 | 52d | 2025-06-02 | 2025-07-31 |
| 80 | 6 | VxWorks实时版集成和测试 | 52d | 2025-08-01 | 2025-09-30 |
| 81 | 7 | LinuxRT实时版的演示和输出 | 27d | 2025-10-01 | 2025-10-31 |
| 82 | 8 | **车载以太网V0.6开发与测试** | 45d | 2025-08-01 | 2025-09-22 |
| 83 | 8.1 | SOME/IP开发与测试 | 13d | 2025-08-01 | 2025-08-15 |
| 84 | 8.2 | DOIP开发与测试 | 12d | 2025-08-18 | 2025-08-30 |
| 85 | 8.3 | DDS开发与测试 | 13d | 2025-09-01 | 2025-09-15 |
| 86 | 8.4 | XMPP, MQTT开发与测试 | 6d | 2025-09-16 | 2025-09-22 |
| 87 | 9 | K-Line | 1d | 2025-04-14 | 2025-04-14 |
| 88 | 10 | J1587 | 1d | 2025-04-14 | 2025-04-14 |
| 89 | 11 | J1939 | 1d | 2025-04-14 | 2025-04-14 |

Notes:
- 78: 集成测试
